# IdiomasITSZN_Cronograma_v1

Schedule from MS Project, 2018-02-02 to 2018-06-11, A marks actual dates.
Ragna

## Calendars

- Standard: Mon-Fri 08:00-12:00, 13:00-17:00; Sat-Sun off. Exceptions (off unless hours are given): 2018-02-05 (Suspensión), 2018-02-19 (Suspensión), 2018-03-26 to 2018-04-06 (Vacaciones), 2018-05-01 (Suspensión), 2018-05-10 (Suspensión), 2018-05-15 (Suspensión).

## Resources

| Resource |
| --- |
| Arredondo Salcedo Daniel |
| Herrada Cisneros Miguel |
| Mireles Mireles Fermin |
| Rodriguez Rivaz Jose Manuel |

## Schedule

| ID | WBS | Task | Type | Duration | Start | Finish | Predecessors | Complete | Remaining | Baseline start | Baseline finish | Baseline duration | Total slack | Free slack | Constraint | Resources | Work | Actual work |
| --- | --- | --- | --- | --- | --- | --- | --- | --- | --- | --- | --- | --- | --- | --- | --- | --- | --- | --- |
| 1 | 1 | **Plan general** |  | 77d | 2018-02-02 A | 2018-06-11 |  | 78% | 16.62d |  |  |  | 0d |  |  |  | 848h | 848h |
| 2 | 1.1 | Planificación del proyecto |  | 2d | 2018-02-02 A | 2018-02-06 A |  | 100% |  | 2018-02-02 | 2018-02-06 | 2d |  |  |  | Arredondo Salcedo Daniel [50%] | 8h | 8h |
| 3 | 1.2 | Creación de historias de usuario |  | 12h | 2018-02-07 A | 2018-02-08 A | 2 | 100% |  | 2018-02-07 | 2018-02-08 | 12h |  |  |  | Arredondo Salcedo Daniel [50%]; Herrada Cisneros Miguel [50%]; Mireles Mireles Fermin [50%]; Rodriguez Rivaz Jose Manuel [50%] | 24h | 24h |
| 4 | 1.3 | Ejecución del sprint 1 |  | 2w | 2018-02-12 A | 2018-02-26 A | 3 | 100% |  | 2018-02-08 | 2018-02-23 | 2w |  |  |  | Arredondo Salcedo Daniel [50%]; Herrada Cisneros Miguel [50%]; Mireles Mireles Fermin [50%]; Rodriguez Rivaz Jose Manuel [50%] | 160h | 160h |
| 5 | 1.4 | Ejecución del sprint 2 |  | 2w | 2018-02-27 A | 2018-03-12 A | 4 | 100% |  | 2018-02-23 | 2018-03-09 | 2w |  |  |  | Arredondo Salcedo Daniel [50%]; Herrada Cisneros Miguel [50%]; Mireles Mireles Fermin [50%]; Rodriguez Rivaz Jose Manuel [50%] | 160h | 160h |
| 6 | 1.5 | Ejecución del sprint 3 |  | 3w | 2018-03-13 A | 2018-04-16 A | 5 | 100% |  | 2018-03-09 | 2018-03-23 | 2w |  |  |  | Arredondo Salcedo Daniel [50%]; Herrada Cisneros Miguel [50%]; Mireles Mireles Fermin [50%]; Rodriguez Rivaz Jose Manuel [50%] | 240h | 240h |
| 7 | 1.6 | Ejecución del sprint 4 |  | 2.2w | 2018-04-17 A | 2018-05-02 A | 6 | 100% |  | 2018-03-23 | 2018-04-20 | 2w |  |  | finish no earlier than 2018-05-07 | Arredondo Salcedo Daniel [50%]; Herrada Cisneros Miguel [50%]; Mireles Mireles Fermin [50%]; Rodriguez Rivaz Jose Manuel [50%] | 176h | 176h |
| 8 | 1.7 | Ejecución del sprint 5 |  | 0.8w | 2018-05-08 A | 2018-05-14 A | 7 | 100% |  | 2018-04-20 | 2018-05-07 | 2w |  |  |  | Arredondo Salcedo Daniel [50%]; Herrada Cisneros Miguel [50%]; Mireles Mireles Fermin [50%]; Rodriguez Rivaz Jose Manuel [50%] | 64h | 64h |
| 9 | 1.8 | Cierre del proyecto. |  | 1d | 2018-06-11 A | 2018-06-11 A | 8 | 100% |  | 2018-05-30 | 2018-05-31 | 1d |  |  |  | Arredondo Salcedo Daniel [50%]; Herrada Cisneros Miguel [50%]; Mireles Mireles Fermin [50%]; Rodriguez Rivaz Jose Manuel [50%] | 16h | 16h |
| 10 | 1.9 | Ejecución del sprint 6 |  | 2w | 2018-05-16 | 2018-05-29 | 8 |  |  | 2018-05-07 | 2018-05-23 | 2w | 4d | 0d |  |  |  |  |
| 11 | 1.10 | Generación de manuales |  | 1w | 2018-05-30 | 2018-06-05 | 10 |  |  | 2018-05-23 | 2018-05-30 | 1w | 4d |  |  |  |  |  |
| 12 | 2 | **Seguimiento HU** |  | 53d | 2018-02-12 A | 2018-05-14 A |  | 100% |  |  |  |  |  |  |  |  |  |  |
| 13 | 2.1 | HU1_CRUDestudiantes | manual | 10d | 2018-02-12 A | 2018-02-26 A |  | 100% |  | 2018-02-12 | 2018-02-26 |  |  |  |  |  |  |  |
| 14 | 2.2 | HU4_Examenes ubicacion | manual | 10d | 2018-02-12 A | 2018-02-26 A |  | 100% |  | 2018-02-12 | 2018-02-26 |  |  |  |  |  |  |  |
| 15 | 2.3 | HU5_Examenes TOEIC | manual | 20d | 2018-02-12 A | 2018-03-12 A |  | 100% |  | 2018-02-12 | 2018-02-26 |  |  |  |  |  |  |  |
| 16 | 2.4 | HU6_Lista estudiantes | manual | 10d | 2018-02-27 A | 2018-03-12 A |  | 100% |  | 2018-02-27 | 2018-03-12 |  |  |  |  |  |  |  |
| 17 | 2.5 | HU8_Boletas calificaciones | manual | 10d | 2018-02-27 A | 2018-03-12 A |  | 100% |  | 2018-02-27 | 2018-03-12 |  |  |  |  |  |  |  |
| 18 | 2.6 | HU10_Horarios | manual | 10d | 2018-02-27 A | 2018-03-12 A |  | 100% |  | 2018-02-27 | 2018-03-12 |  |  |  |  |  |  |  |
| 19 | 2.7 | HU11_CRUDdocentes | manual | 10d | 2018-02-27 A | 2018-03-12 A |  | 100% |  | 2018-02-27 | 2018-03-12 |  |  |  |  |  |  |  |
| 20 | 2.8 | HU2_Captura calificaciones | manual | 15d | 2018-03-13 A | 2018-04-16 A |  | 100% |  | 2018-03-13 | 2018-04-16 |  |  |  |  |  |  |  |
| 21 | 2.9 | HU3_Incripcion de estudiantes | manual | 15d | 2018-03-13 A | 2018-04-16 A |  | 100% |  | 2018-03-13 | 2018-04-16 |  |  |  |  |  |  |  |
| 22 | 2.10 | HU7.1_Acta Curso | manual | 26d | 2018-03-13 A | 2018-05-02 A |  | 100% |  | 2018-03-13 | 2018-04-16 |  |  |  |  |  |  |  |
| 23 | 2.11 | HU7.2_Actas TOEIC | manual | 33d | 2018-03-13 A | 2018-05-14 A |  | 100% |  | 2018-03-13 | 2018-04-16 |  |  |  |  |  |  |  |
| 24 | 2.12 | HU12_Acceso sistema | manual | 15d | 2018-03-13 A | 2018-04-16 A |  | 100% |  | 2018-03-13 | 2018-04-16 |  |  |  |  |  |  |  |
| 25 | 2.13 | HU13_Cuentas usuario | manual | 15d | 2018-03-13 A | 2018-04-16 A |  | 100% |  | 2018-03-13 | 2018-04-16 |  |  |  |  |  |  |  |
| 26 | 2.14 | HU9_Reporte carreras | manual | 11d | 2018-04-17 A | 2018-05-02 A |  | 100% |  | 2018-04-17 | 2018-05-02 |  |  |  |  |  |  |  |

Notes:
- 8: En el Sprint 5 se realizaron tambien los manuales
- 9: La entrega del proyecto se realizo en un afecha posterior por la disponibilidad en la agenda del cliente
- 10: Sprint no realizado por el desfase de fechas, pero se cumplieron con las historias de usuario.
